# POC项目

Schedule from a web Gantt chart, 2024-09-25 to 2025-02-14.
Saturdays and Sundays are off

## Schedule

| ID | WBS | Task | Duration | Start | Finish | Predecessors | inPeople | Status |
| --- | --- | --- | --- | --- | --- | --- | --- | --- |
| 2 | 1 | SOR确认 | 4d | 2024-09-25 | 2024-09-30 |  | HMCT&Alpine&ArcSoft |  |
| 3 | 2 | 开发文档交付 | 18d | 2024-10-01 | 2024-10-24 | 2 | ArcSoft | waiting |
| 4 | 3 | UE确认 | 3d | 2024-10-10 | 2024-10-14 |  |  |  |
| 5 | 4 | 内部UI作成 | 5d | 2024-10-15 | 2024-10-21 | 4 |  | waiting |
| 6 | 5 | 开发环境提供 | 23d | 2024-09-25 | 2024-10-25 |  | Alpine |  |
| 7 | 6 | MCU编译器及工具准备 | 1d | 2024-09-25 | 2024-09-25 |  |  |  |
| 8 | 7 | 整车环境提供 | 23d | 2024-09-25 | 2024-10-25 |  | HMCT |  |
| 9 | 8 | 8255平台移植 | 15d | 2024-10-28 | 2024-11-15 | 6 | Alpine&ArcSoft | waiting |
| 10 | 9 | 感知算法调优 | 20d | 2024-11-18 | 2024-12-13 | 9 | ArcSoft | waiting |
| 11 | 10 | 台架联合调试 | 20d | 2024-11-18 | 2024-12-13 | 9 | Alpine&ArcSoft | waiting |
| 12 | 11 | 实车联合调试 | 13d | 2024-12-16 | 2025-01-01 | 11 | Alpine&ArcSoft | waiting |
| 13 | 12 | β版本交付 | 12d | 2025-01-02 | 2025-01-17 | 12 | ArcSoft | waiting |
| 14 | 13 | 实车效果调优 | 10d | 2025-01-20 | 2025-01-31 | 13 | ArcSoft | waiting |
| 15 | 14 | Final版本交付 | 5d | 2025-02-03 | 2025-02-07 | 14 | ArcSoft | waiting |
| 16 | 15 | 版本验收 | 5d | 2025-02-10 | 2025-02-14 | 15 | HMCT&Alpine&ArcSoft | waiting |

Notes:
- 2: 项目方确认的SOR/项目计划表
- 3: 方案设计说明、API文档、项目开发计划，接口沟通
- 6: 样件板、摄像头样件、摄像头取流工具和编译工具
- 8: 1辆目标实车（运至杭州，需要有临牌和商业保险）
- 9: 示例程序、α版SDK、测试报告（α版本用于集成调试）
- 10: 精度测试报告
- 11: 上车前的联调
- 12: 具备目标功能的实车
- 13: 功能说明文档、示例程序、β版SDK、测试报告
- 14: 目标功能优化的实车
- 15: 功能说明文档、示例程序、Final版SDK、测试报告
- 16: 验收报告
